# Cronograma Projeto - Registro Caixa

Schedule from MS Project, 2015-03-02 to 2016-07-27, A marks actual dates.

## Calendars

- Padrão: Mon-Fri 08:00-12:00, 13:00-17:00; Sat-Sun off.

## Resources

| Resource |
| --- |
| Gerente |
| Gerente de Projeto |
| Analista de Sistemas |
| Arquiteto de Software |
| Desenvolvedor |
| Analista de Testes |
| Gerente-Lucas Amaral |
| Gerente de Projeto-Lucas Amaral |
| Analista de Sistemas-Rogério R. Fernandes |
| Analista de Sistemas-Lucas Amaral |
| Gerente de Projeto-Rogério R. Fernandes |

## Schedule

| ID | WBS | Task | Type | Duration | Start | Finish | Predecessors | Complete | Remaining | Actual start | Total slack | Free slack | Constraint | Resources | Work | Actual work |
| --- | --- | --- | --- | --- | --- | --- | --- | --- | --- | --- | --- | --- | --- | --- | --- | --- |
| 1 | 1 | **Prática em SI - Cronograma Projeto - My Money** |  | 106d | 2016-03-02 | 2016-07-27 |  | 43% | 60.17d | 2015-03-02 |  |  |  |  | 1231h | 623.88h |
| 2 | 1.1 | **Concepção** |  | 26d | 2016-03-02 A | 2016-04-06 |  | 85% | 3.88d |  |  |  |  |  | 1047h | 623.88h |
| 3 | 1.1.1 | Plano de Projeto |  | 2d | 2016-03-02 A | 2016-03-04 |  | 94% | 0.12d |  | 103.88d |  | finish no earlier than 2016-03-03 | Gerente-Lucas Amaral; Gerente de Projeto-Rogério R. Fernandes | 15h | 15h |
| 4 | 1.1.2 | Cronograma |  | 3d | 2016-03-04 A | 2016-03-09 A | 3 | 100% |  |  |  |  |  | Gerente de Projeto-Lucas Amaral; Analista de Sistemas-Rogério R. Fernandes | 48h | 48h |
| 5 | 1.1.3 | Modelagem de Processos de Negócio |  | 7d | 2016-03-09 A | 2016-03-18 | 4 | 50% | 3.5d |  | 93.88d |  | start no earlier than 2016-03-09 | Gerente de Projeto-Rogério R. Fernandes; Analista de Sistemas-Lucas Amaral | 56h | 28h |
| 6 | 1.1.4 | **Requisitos e Análise** |  | 22d | 2016-03-08 A | 2016-04-06 |  | 95% | 1.16d |  |  |  |  | Gerente de Projeto-Lucas Amaral; Analista de Sistemas-Rogério R. Fernandes | 928h | 532.88h |
| 7 | 1.1.4.1 | Casos de Uso / Requisitos Funcionais | manual | 7d | 2016-03-18 A | 2016-03-29 A | 5 | 100% |  |  |  |  |  | Analista de Sistemas-Lucas Amaral; Gerente de Projeto-Rogério R. Fernandes | 56h | 56h |
| 8 | 1.1.4.2 | Requisitos Não Funcionais | manual | 2d | 2016-03-18 A | 2016-03-22 A | 5 | 100% |  |  |  |  |  | Gerente de Projeto-Lucas Amaral; Analista de Sistemas-Rogério R. Fernandes | 24h | 24h |
| 9 | 1.1.4.3 | Modelo de Domínio Preliminar | manual | 3d | 2016-03-29 A | 2016-04-01 A | 7, 8 | 100% |  |  |  |  |  | Analista de Sistemas-Lucas Amaral; Gerente de Projeto-Rogério R. Fernandes | 48h | 48h |
| 10 | 1.1.4.4 | Estimativa | manual | 2d | 2016-04-01 A | 2016-04-05 A | 9 | 100% |  |  |  |  |  | Gerente de Projeto-Lucas Amaral; Analista de Sistemas-Rogério R. Fernandes | 32h | 32h |
| 11 | 1.1.4.5 | **Gerenciamento de Projeto** |  | 21d | 2016-03-08 A | 2016-04-06 |  | 80% | 4.2d |  |  |  |  | Gerente de Projeto-Rogério R. Fernandes; Analista de Sistemas-Lucas Amaral | 416h | 331.2h |
| 12 | 1.1.4.5.1 | Monitoramento e controle - Relatório de Progresso 01 | manual | 1d | 2016-03-08 A | 2016-03-08 A |  | 100% |  |  |  |  |  | Analista de Sistemas-Rogério R. Fernandes; Gerente de Projeto-Lucas Amaral | 16h | 16h |
| 13 | 1.1.4.5.2 | Monitoramento e controle - Relatório de Progresso 02 | manual | 1d | 2016-03-15 A | 2016-03-15 A |  | 100% |  |  |  |  |  | Analista de Sistemas-Lucas Amaral; Gerente de Projeto-Rogério R. Fernandes | 16h | 16h |
| 14 | 1.1.4.5.3 | Monitoramento e controle - Relatório de Progresso 03 | manual | 1d | 2016-03-22 A | 2016-03-22 A |  | 100% |  |  |  |  |  | Analista de Sistemas-Rogério R. Fernandes; Gerente de Projeto-Lucas Amaral | 16h | 16h |
| 15 | 1.1.4.5.4 | Monitoramento e controle - Relatório de Progresso 04 | manual | 1d | 2016-03-29 A | 2016-03-29 A |  | 100% |  |  |  |  |  | Analista de Sistemas-Lucas Amaral; Gerente de Projeto-Rogério R. Fernandes | 16h | 16h |
| 16 | 1.1.4.5.5 | Monitoramento e controle - Relatório de Progresso 05 | manual | 1d | 2016-04-05 | 2016-04-05 |  |  |  |  |  |  |  | Analista de Sistemas-Rogério R. Fernandes; Gerente de Projeto-Lucas Amaral | 16h |  |
| 17 | 1.2 | Apresentação 1o Trabalho | manual | 1d | 2015-04-06 | 2015-04-06 |  |  |  |  |  |  |  |  |  |  |
| 18 | 1.3 | **Elaboração** |  | 243d? | 2015-03-30 | 2016-03-03 |  |  |  |  | 0d |  |  |  | 80h |  |
| 19 | 1.3.1 | **Gerenciamento de Projeto** |  | 7d? | 2015-03-30 | 2015-04-08 |  |  |  |  | 0d |  |  |  | 24h |  |
| 20 | 1.3.1.1 | Revisão do Planejamento | manual | 1d? | 2015-03-30 | 2015-03-31 | 17 |  |  |  |  |  |  | Gerente de Projeto | 8h |  |
| 21 | 1.3.1.2 | Monitoramento e controle - Relatório de Progresso ?? | manual | 1d | 2015-03-31 | 2015-04-01 | 20 |  |  |  |  |  |  | Gerente de Projeto | 8h |  |
| 22 | 1.3.1.3 | Monitoramento e controle - Relatório de Progresso ?? | manual | 1d? | 2015-04-07 | 2015-04-08 | 20FS+5d |  |  |  |  |  |  | Gerente de Projeto | 8h |  |
| 23 | 1.3.2 | Projeto (arquitetura) |  | 1d | 2016-03-02 | 2016-03-03 | 20 |  |  |  | 100.88d | 0d |  | Arquiteto de Software | 8h |  |
| 24 | 1.3.3 | **UC01: Registro de Caixa** |  | 3d? | 2015-04-01 | 2015-04-06 |  |  |  |  | 0d |  |  |  | 24h |  |
| 25 | 1.3.3.1 | Requisitos e Análise (detalhamento) | manual | 1d? | 2015-04-01 | 2015-04-02 | 23 |  |  |  |  |  |  | Analista de Sistemas | 8h |  |
| 26 | 1.3.3.2 | Implementação | manual | 1d? | 2015-04-02 | 2015-04-03 | 25 |  |  |  |  |  |  | Desenvolvedor | 8h |  |
| 27 | 1.3.3.3 | Teste | manual | 1d? | 2015-04-03 | 2015-04-06 | 26 |  |  |  |  |  |  | Analista de Testes | 8h |  |

Notes:
- 20: Planejar projeto / Elaborar o cronograma
- 21: Acompanhar o progresso em relação ao planejamento / Reportar o progresso do projeto periodicamente
- 23: Documentar arquitetura do software
- 25: Desenhar interface com usuário / Detalhar casos de uso, requisitos (cenários) e modelo de domínio
- 26: Implementar arquitetura
- 27: Testar arquitetura

| ID | WBS | Task | Type | Duration | Start | Finish | Predecessors | Total slack | Resources | Work |
| --- | --- | --- | --- | --- | --- | --- | --- | --- | --- | --- |
| 28 | 1.3.4 | **UC02: Impressão de Bilhete** |  | 3d? | 2015-04-02 | 2015-04-07 |  | 0d |  | 24h |
| 29 | 1.3.4.1 | Requisitos e Análise (detalhamento) | manual | 1d? | 2015-04-02 | 2015-04-03 | 25 |  | Analista de Sistemas | 8h |
| 30 | 1.3.4.2 | Implementação | manual | 1d? | 2015-04-03 | 2015-04-06 | 26, 29 |  | Desenvolvedor | 8h |
| 31 | 1.3.4.3 | Teste | manual | 1d? | 2015-04-06 | 2015-04-07 | 27, 30 |  | Analista de Testes | 8h |
| 32 | 1.4 | Apresentação 2o Trabalho | manual | 4d | 2015-05-04 | 2015-05-07 |  |  |  |  |
| 33 | 1.5 | **Construção** |  | 6d? | 2015-03-02 | 2015-03-10 |  | 0d |  | 96h |
| 34 | 1.5.1 | **Gerenciamento de Projeto** |  | 1d? | 2015-03-02 | 2015-03-03 |  | 0d |  | 24h |
| 35 | 1.5.1.1 | Planejamento | manual | 1d? | 2015-03-02 | 2015-03-03 |  |  | Gerente de Projeto | 8h |
| 36 | 1.5.1.2 | Monitoramento e controle - Relatório de Progresso ?? | manual | 1d? | 2015-03-02 | 2015-03-03 |  |  | Gerente de Projeto | 8h |
| 37 | 1.5.1.3 | Monitoramento e controle - Relatório de Progresso ?? | manual | 1d? | 2015-03-02 | 2015-03-03 |  |  | Gerente de Projeto | 8h |
| 38 | 1.5.2 | **UC03: Fechamento de Caixa** |  | 3d? | 2015-03-03 | 2015-03-06 |  | 0d |  | 24h |
| 39 | 1.5.2.1 | Requisitos e Análise (detalhamento) | manual | 1d? | 2015-03-03 | 2015-03-04 | 35 |  | Analista de Sistemas | 8h |
| 40 | 1.5.2.2 | Implementação | manual | 1d? | 2015-03-04 | 2015-03-05 | 39 |  | Desenvolvedor | 8h |
| 41 | 1.5.2.3 | Teste | manual | 1d? | 2015-03-05 | 2015-03-06 | 40 |  | Analista de Testes | 8h |
| 42 | 1.5.3 | **UC04: Cadastro de Produto** |  | 3d? | 2015-03-04 | 2015-03-09 |  | 0d |  | 24h |
| 43 | 1.5.3.1 | Requisitos e Análise (detalhamento) | manual | 1d? | 2015-03-04 | 2015-03-05 | 39 |  | Analista de Sistemas | 8h |
| 44 | 1.5.3.2 | Implementação | manual | 1d? | 2015-03-05 | 2015-03-06 | 43, 40 |  | Desenvolvedor | 8h |
| 45 | 1.5.3.3 | Teste | manual | 1d? | 2015-03-06 | 2015-03-09 | 44, 41 |  | Analista de Testes | 8h |
| 46 | 1.5.4 | **UC05: Cadastro de Caixa** |  | 3d? | 2015-03-05 | 2015-03-10 |  | 0d |  | 24h |
| 47 | 1.5.4.1 | Requisitos e Análise (detalhamento) | manual | 1d? | 2015-03-05 | 2015-03-06 | 43 |  | Analista de Sistemas | 8h |
| 48 | 1.5.4.2 | Implementação | manual | 1d? | 2015-03-06 | 2015-03-09 | 44, 47 |  | Desenvolvedor | 8h |
| 49 | 1.5.4.3 | Teste | manual | 1d? | 2015-03-09 | 2015-03-10 | 45, 48 |  | Analista de Testes | 8h |
| 50 | 1.6 | **Transição** |  | 1d | 2016-03-02 | 2016-03-03 |  | 104.88d |  | 8h |
| 51 | 1.6.1 | Implantação |  | 1d | 2016-03-02 | 2016-03-03 | 47 | 104.88d | Analista de Sistemas | 8h |
| 52 | 1.7 | Apresentação 3o Trabalho | manual | 2d | 2015-06-25 | 2015-06-29 |  |  |  |  |

Notes:
- 29: Desenhar interface com usuário / Detalhar casos de uso, requisitos (cenários) e modelo de domínio
- 30: Implementar arquitetura
- 31: Testar arquitetura
- 35: Planejar projeto / Elaborar o cronograma
- 36: Acompanhar o progresso em relação ao planejamento / Reportar o progresso do projeto periodicamente
- 39: Desenhar interface com usuário / Detalhar casos de uso, requisitos (cenários) e modelo de domínio
- 40: Implementar funcionalidades
- 41: Testar funcionalidades
- 43: Desenhar interface com usuário / Detalhar casos de uso, requisitos (cenários) e modelo de domínio
- 44: Implementar funcionalidades
- 45: Testar funcionalidades
- 47: Desenhar interface com usuário / Detalhar casos de uso, requisitos (cenários) e modelo de domínio
- 48: Implementar funcionalidades
- 49: Testar funcionalidades
- 51: Elaborar roteiro de homologação e implantação
